# 软件开发

Schedule from MS Project, 2017-09-21 to 2017-12-15, A marks actual dates.

## Calendars

- 标准: Mon-Fri 08:00-12:00, 13:00-17:00; Sat-Sun off. Exceptions (off unless hours are given): 2017-09-24 08:00-12:00, 13:00-17:00, 2017-09-30 to 2017-10-01 08:00-12:00, 13:00-17:00, 2017-10-07 to 2017-10-08 08:00-12:00, 13:00-17:00, 2017-10-14 to 2017-10-15 08:00-12:00, 13:00-17:00, 2017-10-21 to 2017-10-22 08:00-12:00, 13:00-17:00, 2017-10-28 to 2017-10-29 08:00-12:00, 13:00-17:00, 2017-11-04 to 2017-11-05 08:00-12:00, 13:00-17:00, 2017-11-11 to 2017-11-12 08:00-12:00, 13:00-17:00, 2017-12-09 to 2017-12-10 08:00-12:00, 13:00-17:00.

## Resources

| Resource |
| --- |
| 项目经理 |
| 开发人员 |
| 测试人员 |
| 需求人员 |
| 设计人员 |
| 架构师 |
| DBA |
| 庄仁鑫 |
| 陈森 |
| 郭蕴喆 |
| 颜常霖 |
| 卢楚斌 |
| 周长鑫 |
| 全体成员 |

## Schedule

| ID | WBS | Task | Type | Duration | Start | Finish | Predecessors | Complete | Remaining | Baseline start | Baseline finish | Baseline duration | Total slack | Constraint | Deadline | Resources | Work | Actual work |
| --- | --- | --- | --- | --- | --- | --- | --- | --- | --- | --- | --- | --- | --- | --- | --- | --- | --- | --- |
| 1 | 1 | **启动阶段** |  | 2d? | 2017-09-21 A | 2017-09-22 A |  | 100% |  | 2017-09-21 | 2017-09-22 | 2d? |  |  |  |  | 16h | 16h |
| 2 | 1.1 | 开发项目章程 |  | 1d? | 2017-09-21 A | 2017-09-21 A |  | 100% |  | 2017-09-21 | 2017-09-21 | 1d? |  |  |  | 庄仁鑫 | 8h | 8h |
| 3 | 1.2 | 项目正式启动 |  | 1d? | 2017-09-22 A | 2017-09-22 A | 2 | 100% |  | 2017-09-22 | 2017-09-22 | 1d? |  |  |  | 庄仁鑫 | 8h | 8h |
| 4 | 2 | **计划阶段** |  | 2d | 2017-09-22 A | 2017-09-25 A | 1SS+1d | 100% |  | 2017-09-22 | 2017-09-24 | 2d |  |  | 2017-09-24 |  | 16h | 16h |
| 5 | 2.1 | 确定项目所需资源 |  | 1d | 2017-09-22 A | 2017-09-22 A | 3 | 100% |  | 2017-09-22 | 2017-09-23 | 1d |  |  |  | 庄仁鑫 | 8h | 8h |
| 6 | 2.2 | 撰写开题报告与项目计划 |  | 1d | 2017-09-24 A | 2017-09-24 A | 5 | 100% |  | 2017-09-24 | 2017-09-24 | 1d |  | finish no later than 2017-09-24 |  | 庄仁鑫 | 8h | 8h |
| 7 | 2.3 | 项目规划完成 | milestone | 0d | 2017-09-25 A | 2017-09-25 A | 6 | 100% |  | 2017-09-24 | 2017-09-24 | 0d |  |  |  |  |  |  |
| 8 | 3 | **执行阶段** |  | 72d? | 2017-09-25 A | 2017-12-11 | 4 | 35% | 47.09d? | 2017-09-25 | 2017-12-11 | 72d? | 0d |  |  |  | 1214h | 420h |
| 9 | 3.1 | **需求分析** |  | 19d | 2017-09-25 A | 2017-10-14 A | 4 | 100% |  | 2017-09-25 | 2017-10-13 | 19d |  |  |  |  | 216h | 216h |
| 10 | 3.1.1 | 开发原型 |  | 4d | 2017-09-25 A | 2017-09-28 A | 7 | 100% |  | 2017-09-25 | 2017-09-28 | 4d |  |  |  | 周长鑫 | 32h | 32h |
| 11 | 3.1.2 | **分析系统功能需求** |  | 4d | 2017-09-27 A | 2017-09-30 A |  | 100% |  | 2017-09-27 | 2017-09-30 | 4d |  |  |  |  | 144h | 144h |
| 12 | 3.1.2.1 | 用户操作相关的功能需求 |  | 4d | 2017-09-27 A | 2017-09-30 A | 10SS+3d | 100% |  | 2017-09-27 | 2017-09-30 | 4d |  |  |  | 陈森 | 32h | 32h |
| 13 | 3.1.2.2 | 学生模块功能需求 |  | 4d | 2017-09-27 A | 2017-09-30 A | 10SS+3d | 100% |  | 2017-09-27 | 2017-09-30 | 4d |  | finish no earlier than 2017-09-30 |  | 郭蕴喆 | 32h | 32h |
| 14 | 3.1.2.3 | 班主任模块功能需求 |  | 4d | 2017-09-27 A | 2017-09-30 A | 10SS+3d | 100% |  | 2017-09-27 | 2017-09-30 | 4d |  |  |  | 颜常霖 | 32h | 32h |
| 15 | 3.1.2.4 | 任课教师功能需求 |  | 4d | 2017-09-27 A | 2017-09-30 A | 10SS+3d | 100% |  | 2017-09-27 | 2017-09-30 | 4d |  | finish no earlier than 2017-09-30 |  | 卢楚斌 | 32h | 32h |
| 16 | 3.1.2.5 | 系统管理员功能需求 |  | 2d | 2017-09-29 A | 2017-09-30 A | 10 | 100% |  | 2017-09-29 | 2017-09-30 | 2d |  | finish no earlier than 2017-09-30 |  | 周长鑫 | 16h | 16h |
| 17 | 3.1.3 | 分析系统非功能需求 |  | 2d | 2017-10-09 A | 2017-10-10 A | 12, 13, 14, 15, 16 | 100% |  | 2017-10-09 | 2017-10-10 | 2d |  | finish no earlier than 2017-10-10 |  | 卢楚斌 | 16h | 16h |
| 18 | 3.1.4 | 整合需求文档 |  | 2d | 2017-10-11 A | 2017-10-12 A | 17 | 100% |  | 2017-10-11 | 2017-10-12 | 2d |  |  |  | 颜常霖 | 16h | 16h |
| 19 | 3.1.5 | 工作组共同审阅并修改需求文档 |  | 8h | 2017-10-13 A | 2017-10-13 A | 18 | 100% |  | 2017-10-13 | 2017-10-13 | 8h |  |  |  | 卢楚斌 | 8h | 8h |
| 20 | 3.1.6 | 需求分析工作完成 | milestone | 0d | 2017-10-14 A | 2017-10-14 A | 19 | 100% |  | 2017-10-13 | 2017-10-13 | 0d |  |  |  |  |  |  |
| 21 | 3.2 | **概要设计** |  | 13d | 2017-10-14 A | 2017-10-27 A | 9 | 100% |  | 2017-10-14 | 2017-10-26 | 13d |  |  |  |  | 136h | 136h |
| 22 | 3.2.1 | 系统逻辑架构设计 |  | 2d | 2017-10-14 A | 2017-10-15 A | 20 | 100% |  | 2017-10-14 | 2017-10-15 | 2d |  |  |  | 陈森 | 16h | 16h |
| 23 | 3.2.2 | 系统物理架构设计 |  | 2d | 2017-10-16 A | 2017-10-17 A | 22 | 100% |  | 2017-10-16 | 2017-10-17 | 2d |  |  |  | 陈森 | 16h | 16h |
| 24 | 3.2.3 | 根据需求文档建立概念数据模型 |  | 4d | 2017-10-14 A | 2017-10-17 A | 20 | 100% |  | 2017-10-14 | 2017-10-17 | 4d |  |  |  | 郭蕴喆 | 32h | 32h |
| 25 | 3.2.4 | 系统接口设计 |  | 1d | 2017-10-18 A | 2017-10-18 A | 23 | 100% |  | 2017-10-18 | 2017-10-18 | 1d |  |  |  | 陈森 | 8h | 8h |
| 26 | 3.2.5 | 审阅系统设计 |  | 2d | 2017-10-19 A | 2017-10-20 A | 25 | 100% |  | 2017-10-19 | 2017-10-20 | 2d |  | finish no earlier than 2017-10-20 |  | 庄仁鑫 | 16h | 16h |
| 27 | 3.2.6 | 根据反馈修改设计 |  | 2d | 2017-10-21 A | 2017-10-22 A | 26 | 100% |  | 2017-10-21 | 2017-10-22 | 2d |  |  |  | 陈森 | 16h | 16h |
| 28 | 3.2.7 | 撰写概要设计文档 |  | 2d | 2017-10-23 A | 2017-10-24 A | 27 | 100% |  | 2017-10-23 | 2017-10-24 | 2d |  |  |  | 陈森 | 16h | 16h |
| 29 | 3.2.8 | 工作组共同审阅并修改概要设计文档 |  | 2d | 2017-10-25 A | 2017-10-26 A | 28 | 100% |  | 2017-10-25 | 2017-10-26 | 2d |  |  |  | 陈森 | 16h | 16h |
| 30 | 3.2.9 | 概要设计工作完成 | milestone | 0d | 2017-10-27 A | 2017-10-27 A | 29 | 100% |  | 2017-10-26 | 2017-10-26 | 0d |  |  |  |  |  |  |

Notes:
- 2: 项目标题：学生信息管理系统 / WBS项标号：1.1 / WBS项名字：开发项目章程 / 描述：项目组全体成员确定项目正式启动。
- 5: 项目标题：学生信息管理系统 / WBS项标号：2.1 / WBS项名称：确定项目所需资源 / 描述：确定人力资源，物力资源，并成功获取。
- 6: 项目标题：学生信息管理系统 / WBS项标号：2.2 / WBS项名称：撰写开题报告，做项目计划 / 描述：项目经理规划项目进度
- 10: 项目标题：学生信息管理系统 / WBS项标号：3.1.1 / WBS项名称：开发原型 / 描述：在需求不确定的情况下，通过开发原型的方法逐步确定需求；该原型作为与客户沟通的工具。
- 12: 项目标题：学生信息管理系统 / WBS项标号：3.1.2.1/ WBS项名称：用户操作相关的功能需求 / 描述：描述与用户操作相关的功能需求，如登录，修改密码等；通过用例图和用例文本详细刻画需求
- 13: 项目标题：学生信息管理系统 / WBS项标号：3.1.2.2/ WBS项名称：学生模块功能需求 / 描述：描述学生模块中的功能，如查看个人信息，修改个人信息等；通过用例图和用例文本详细刻画需求
- 14: 项目标题：学生信息管理系统 / WBS项标号：3.1.2.3/ WBS项名称：班主任模块功能需求 / 描述：描述班主任模块中的功能，如查看班级学生列表，查看学生档案等；这是本系统的主体功能之一；通过用例图和用例文本详细刻画需求。
- 15: 项目标题：学生信息管理系统 / WBS项标号：3.1.2.4/ WBS项名称：任课教师模块功能需求 / 描述：描述任课教师模块的功能需求，如修改考勤和成绩，查看通讯录等；这是本系统的主体功能之一；通过用例图和用例文本详细刻画功能需求。
- 16: 项目标题：学生信息管理系统 / WBS项标号：3.1.2.5/ WBS项名称：系统管理员功能需求 / 描述：描述系统管理员的功能，如录入用户信息，审核档案等；通过用例图和用例文本详细刻画需求
- 17: 项目标题：学生信息管理系统 / WBS项标号：3.1.3/ WBS项名称：分析系统非功能需求 / 描述：确定系统在安全性，可用性等方面的要求
- 18: 项目标题：学生信息管理系统 / WBS项标号：3.1.4/ WBS项名称：整合需求文档 / 描述：在完成各个模块的功能需求之后，在需求文档里进行整合，形成完整的系统需求。
- 19: 项目标题：学生信息管理系统 / WBS项标号：3.1.5/ WBS项名称：工作组共同审阅并修改需求文档 / 描述：审阅文档格式，去除冗余，增强可理解性
- 22: 项目标题：学生信息管理系统 / WBS项标号：3.2.1/ WBS项名称：系统逻辑架构设计 / 描述：确定系统所用技术及框架，画出系统的技术架构图。
- 23: 项目标题：学生信息管理系统 / WBS项标号：3.2.2/ WBS项名称：系统物理架构设计 / 描述：确定系统的物理部署结构，画出物理架构图
- 24: 项目标题：学生信息管理系统 / WBS项标号：3.2.3/ WBS项名称：根据需求文档建立概念数据模型 / 描述：从需求文档中每个用例的相关数据中抽取出数据模型，建立系统ER模型详细描述业务数据对象以及各对象之间的联系。
- 25: 项目标题：学生信息管理系统 / WBS项标号：3.2.4/ WBS项名称：系统接口设计 / 描述：确定系统外部接口，内部接口，用户接口
- 26: 项目标题：学生信息管理系统 / WBS项标号：3.2.5/ WBS项名称：审阅系统设计 / 描述：审阅逻辑架构，物理架构，数据模型，接口的合理性，提出修改意见
- 27: 项目标题：学生信息管理系统 / WBS项标号：3.2.6/ WBS项名称：根据反馈修改设计 / 描述：根据上一个WBS项中提出来的修改意见，修改系统逻辑架构，物理架构，数据模型，接口设计。
- 28: 项目标题：学生信息管理系统 / WBS项标号：3.2.7/ WBS项名称：撰写概要设计文档 / 描述：以文档形式整合逻辑架构，物理架构，数据模型，接口设计，作为本阶段的最终输出制品以及下阶段的输入制品。
- 29: 项目标题：学生信息管理系统 / WBS项标号：3.2.8/ WBS项名称：工作组共同审阅并修改概要设计文档 / 描述：审阅文档并修改，提高文档可读性，合理性。

| ID | WBS | Task | Type | Duration | Start | Finish | Predecessors | Complete | Remaining | Baseline start | Baseline finish | Baseline duration | Total slack | Free slack | Constraint | Resources | Work | Actual work |
| --- | --- | --- | --- | --- | --- | --- | --- | --- | --- | --- | --- | --- | --- | --- | --- | --- | --- | --- |
| 31 | 3.3 | **详细设计** |  | 18d | 2017-10-27 A | 2017-11-13 | 21 | 29% | 12.81d | 2017-10-27 | 2017-11-13 | 18d | 0d |  |  |  | 236h | 68h |
| 32 | 3.3.1 | 系统物理数据模型设计 |  | 3.5d | 2017-10-27 A | 2017-10-30 A | 30 | 100% |  | 2017-10-27 | 2017-10-30 | 3.5d |  |  |  | 郭蕴喆 | 28h | 28h |
| 33 | 3.3.2 | 用户界面设计 |  | 3d | 2017-10-29 A | 2017-10-31 A | 32SS+3d | 100% |  | 2017-10-29 | 2017-10-31 | 3d |  |  | finish no earlier than 2017-10-31 | 周长鑫 | 24h | 24h |
| 34 | 3.3.3 | 对象模型设计 |  | 4d | 2017-10-30 A | 2017-11-02 | 32SS+4d | 50% | 2d | 2017-10-30 | 2017-11-02 | 4d | 11d | 0d |  | 庄仁鑫 | 32h | 16h |
| 35 | 3.3.4 | **动态模型设计** |  | 3d | 2017-11-01 | 2017-11-03 |  |  |  | 2017-11-01 | 2017-11-03 | 3d | 0d |  |  |  | 72h |  |
| 36 | 3.3.4.1 | 学生，管理员模块动态模型设计 |  | 3d | 2017-11-01 | 2017-11-03 | 34SS+2d |  |  | 2017-11-01 | 2017-11-03 | 3d | 0d |  |  | 颜常霖 | 24h |  |
| 37 | 3.3.4.2 | 任课教师动态模型设计 |  | 3d | 2017-11-01 | 2017-11-03 | 34SS+2d |  |  | 2017-11-01 | 2017-11-03 | 3d | 0d |  |  | 陈森 | 24h |  |
| 38 | 3.3.4.3 | 班主任模块动态模型设计 |  | 3d | 2017-11-01 | 2017-11-03 | 34SS+2d |  |  | 2017-11-01 | 2017-11-03 | 3d | 0d |  |  | 卢楚斌 | 24h |  |
| 39 | 3.3.5 | 系统非功能性设计（细化） |  | 2d | 2017-11-04 | 2017-11-05 | 38, 37, 36 |  |  | 2017-11-04 | 2017-11-05 | 2d | 0d |  |  | 卢楚斌 | 16h |  |
| 40 | 3.3.6 | 审阅系统设计 |  | 1d | 2017-11-06 | 2017-11-06 | 39 |  |  | 2017-11-06 | 2017-11-06 | 1d | 0d |  |  | 庄仁鑫 | 8h |  |
| 41 | 3.3.7 | 根据反馈修改设计 |  | 3d | 2017-11-07 | 2017-11-09 | 40 |  |  | 2017-11-07 | 2017-11-09 | 3d | 0d |  |  | 庄仁鑫 | 24h |  |
| 42 | 3.3.8 | 撰写详细设计文档 |  | 2d | 2017-11-10 | 2017-11-11 | 41 |  |  | 2017-11-10 | 2017-11-11 | 2d | 0d |  |  | 庄仁鑫 | 16h |  |
| 43 | 3.3.9 | 工作组共同审阅并修改详细设计文档 |  | 2d | 2017-11-12 | 2017-11-13 | 42 |  |  | 2017-11-12 | 2017-11-13 | 2d | 0d |  |  | 庄仁鑫 | 16h |  |
| 44 | 3.3.10 | 详细设计工作完成 | milestone | 0d | 2017-11-13 | 2017-11-13 | 43 |  |  | 2017-11-13 | 2017-11-13 |  | 0d |  |  |  |  |  |
| 45 | 3.4 | **开发** |  | 18d? | 2017-11-14 | 2017-12-07 | 31 |  |  | 2017-11-14 | 2017-12-07 | 18d? | 0d |  |  |  | 594h |  |
| 46 | 3.4.1 | 阅读设计文档 |  | 2d | 2017-11-14 | 2017-11-15 | 44 |  |  | 2017-11-14 | 2017-11-15 | 2d | 0d |  |  | 陈森 | 16h |  |
| 47 | 3.4.2 | 分派任务给开发人员 |  | 1d | 2017-11-16 | 2017-11-16 | 46 |  |  | 2017-11-16 | 2017-11-16 | 1d | 0d |  |  | 陈森 | 8h |  |
| 48 | 3.4.3 | **编写代码** |  | 15d? | 2017-11-17 | 2017-12-07 |  |  |  | 2017-11-17 | 2017-12-07 | 15d? | 0d |  |  |  | 480h |  |
| 49 | 3.4.3.1 | 学生模块开发 |  | 15d? | 2017-11-17 | 2017-12-07 | 47 |  |  | 2017-11-17 | 2017-12-07 | 15d? | 0d |  | finish no earlier than 2017-12-07 | 郭蕴喆 | 120h |  |
| 50 | 3.4.3.2 | 管理员模块开发 |  | 15d? | 2017-11-17 | 2017-12-07 | 47 |  |  | 2017-11-17 | 2017-12-07 | 15d? | 0d |  |  | 卢楚斌 | 120h |  |
| 51 | 3.4.3.3 | 任课教师模块开发 |  | 15d? | 2017-11-17 | 2017-12-07 | 47 |  |  | 2017-11-17 | 2017-12-07 | 15d? | 0d |  |  | 颜常霖 | 120h |  |
| 52 | 3.4.3.4 | 班主任模块开发 |  | 15d? | 2017-11-17 | 2017-12-07 | 47 |  |  | 2017-11-17 | 2017-12-07 | 15d? | 0d |  |  | 周长鑫 | 120h |  |
| 53 | 3.4.4 | 开发人员测试(初步调试) |  | 11.25d | 2017-11-22 | 2017-12-07 | 47SS+4d |  |  | 2017-11-22 | 2017-12-07 | 11.25d | 0d |  | finish no earlier than 2017-12-07 | 庄仁鑫 | 90h |  |
| 54 | 3.4.5 | 开发工作完毕 | milestone | 0d | 2017-12-07 | 2017-12-07 | 53 |  |  | 2017-12-07 | 2017-12-07 | 0d | 0d |  |  |  |  |  |

Notes:
- 32: 项目标题：学生信息管理系统 / WBS项标号：3.3.1/ WBS项名称：系统物理数据模型设计 / 描述：将概念数据模型进行细化，去除冗余，得到系统最终可建立在数据库中的数据模型。
- 33: 项目标题：学生信息管理系统 / WBS项标号：3.3.2/ WBS项名称：用户界面设计 / 描述：基于原型，细化用户接口，提高用户体验
- 34: 项目标题：学生信息管理系统 / WBS项标号：3.3.3/ WBS项名称：对象模型设计 / 描述：确定系统的面向对象设计，包括对类进行建模，确定类之间的关联，最终用包图和类图将系统的对象模型刻画清楚。
- 39: 陈森

| ID | WBS | Task | Type | Duration | Start | Finish | Predecessors | Baseline start | Baseline finish | Baseline duration | Total slack | Constraint | Resources | Work |
| --- | --- | --- | --- | --- | --- | --- | --- | --- | --- | --- | --- | --- | --- | --- |
| 55 | 3.5 | **测试** |  | 4d | 2017-12-08 | 2017-12-11 | 45 | 2017-12-08 | 2017-12-11 | 4d | 0d |  |  | 32h |
| 56 | 3.5.1 | 测试系统运行情况并完善系统 |  | 2d | 2017-12-08 | 2017-12-09 | 54 | 2017-12-08 | 2017-12-09 | 2d | 0d | finish no earlier than 2017-12-08 | 陈森 | 16h |
| 57 | 3.5.2 | 撰写测试报告 |  | 1d | 2017-12-10 | 2017-12-10 | 56 | 2017-12-10 | 2017-12-10 | 1d | 0d |  | 陈森 | 8h |
| 58 | 3.5.3 | 工作组审阅并修改测试文档 |  | 1d | 2017-12-11 | 2017-12-11 | 57 | 2017-12-11 | 2017-12-11 | 1d | 0d |  | 陈森 | 8h |
| 59 | 3.5.4 | 测试完成 | milestone | 0d | 2017-12-11 | 2017-12-11 | 58 | 2017-12-11 | 2017-12-11 |  | 0d | finish no earlier than 2017-12-10 |  |  |
| 60 | 4 | **监控阶段** |  | 67d? | 2017-09-25 | 2017-12-06 | 8SS | 2017-09-25 | 2017-12-06 | 67d? | 5d |  |  | 240h |
| 61 | 4.1 | 开会讨论需求工作 |  | 1d? | 2017-09-25 | 2017-09-25 |  | 2017-09-25 | 2017-09-25 | 1d? | 75d | start no earlier than 2017-09-25 | 庄仁鑫 | 8h |
| 62 | 4.2 | 评审概念数据模型 |  | 1d? | 2017-10-17 | 2017-10-17 |  | 2017-10-17 | 2017-10-17 | 1d? | 53d | start no earlier than 2017-10-17 | 庄仁鑫 | 8h |
| 63 | 4.3 | 评审原型 |  | 2d? | 2017-10-19 | 2017-10-20 |  | 2017-10-19 | 2017-10-20 | 2d? | 50d | finish no earlier than 2017-10-20 | 庄仁鑫 | 16h |
| 64 | 4.4 | 开会讨论详细设计工作 |  | 1d? | 2017-10-26 | 2017-10-26 |  | 2017-10-26 | 2017-10-26 | 1d? | 44d | start no earlier than 2017-10-26 | 庄仁鑫 | 8h |
| 65 | 4.5 | 评审物理数据模型 |  | 3d? | 2017-10-29 | 2017-10-31 |  | 2017-10-29 | 2017-10-31 | 3d? | 39d | finish no earlier than 2017-10-31 | 庄仁鑫 | 24h |
| 66 | 4.6 | 监管代码规范和质量 |  | 22d? | 2017-11-09 | 2017-12-06 |  | 2017-11-09 | 2017-12-06 | 22d? | 9d | finish no earlier than 2017-12-06 | 庄仁鑫 | 176h |
| 67 | 5 | **收尾阶段** |  | 4d | 2017-12-11 | 2017-12-15 | 55, 60 | 2017-12-11 | 2017-12-15 | 5d | 0d |  |  | 89h |
| 68 | 5.1 | **文档** |  | 4d | 2017-12-11 | 2017-12-15 | 55 | 2017-12-11 | 2017-12-15 | 5d | 0d |  |  | 57h |
| 69 | 5.1.1 | 编写用户手册 |  | 1.38ed | 2017-12-11 | 2017-12-13 | 54FS+2d | 2017-12-11 | 2017-12-12 | 1.38ed | 0.75d | finish no earlier than 2017-12-12 | 颜常霖 | 33h |
| 70 | 5.1.2 | 审阅所有的用户文档 |  | 1d | 2017-12-13 | 2017-12-13 | 69 | 2017-12-13 | 2017-12-13 | 1d | 0d |  | 颜常霖 | 8h |
| 71 | 5.1.3 | 根据反馈修改用户文档 |  | 2d | 2017-12-14 | 2017-12-15 | 70 | 2017-12-14 | 2017-12-15 | 2d | 0d |  | 颜常霖 | 16h |
| 72 | 5.1.4 | 文档完成 | milestone | 0d | 2017-12-15 | 2017-12-15 | 71 | 2017-12-15 | 2017-12-15 | 0d | 0d |  |  |  |
| 73 | 5.2 | **实施工作结束后的回顾** |  | 4d | 2017-12-12 | 2017-12-15 | 55 | 2017-12-12 | 2017-12-15 | 4d | 0d |  |  | 32h |
| 74 | 5.2.1 | 撰写结题报告 |  | 4d | 2017-12-12 | 2017-12-15 | 59 | 2017-12-12 | 2017-12-15 | 4d | 0d | finish no earlier than 2017-12-15 | 庄仁鑫 | 32h |
| 75 | 5.2.2 | 回顾完成 | milestone | 0d | 2017-12-15 | 2017-12-15 | 74, 72 | 2017-12-15 | 2017-12-15 | 0d | 0d | finish no earlier than 2017-12-15 |  |  |
| 76 | 6 | 软件开发项目结束 | milestone | 0d | 2017-12-15 | 2017-12-15 | 75 | 2017-12-15 | 2017-12-15 | 0d | 0d |  |  |  |
